# 软件工程实验-第六周_v1.0

Schedule from MS Project, 2017-03-13 to 2017-06-19, A marks actual dates.
Microsoft

## Calendars

- 标准: Mon-Fri 08:00-12:00, 13:00-17:00; Sat-Sun off. Exceptions (off unless hours are given): 2017-04-15 08:00-12:00, 13:00-17:00.

## Resources

| Resource |
| --- |
| 陈少杰 |
| 邹嘉欣 |
| 蒲彦均 |
| 姜鑫 |

## Schedule

| ID | WBS | Task | Type | Duration | Start | Finish | Predecessors | Complete | Baseline start | Baseline finish | Baseline duration | Resources | Work | Actual work |
| --- | --- | --- | --- | --- | --- | --- | --- | --- | --- | --- | --- | --- | --- | --- |
| 1 | 1 | **软件项目计划制定** |  | 4.88d | 2017-03-13 A | 2017-03-17 A |  | 100% | 2017-03-13 | 2017-03-17 | 5d |  | 35.68h | 35.68h |
| 2 | 1.1 | 开会讨论确定选题 | manual | 1d | 2017-03-13 A | 2017-03-13 A |  | 100% | 2017-03-13 | 2017-03-13 | 1d | 陈少杰 [19%]; 姜鑫 [19%]; 蒲彦均 [19%]; 邹嘉欣 [19%] | 6.08h | 6.08h |
| 3 | 1.2 | 会议记录 | manual | 1d | 2017-03-13 A | 2017-03-13 A |  | 100% | 2017-03-13 | 2017-03-13 | 1d | 陈少杰 [13%] | 1.04h | 1.04h |
| 4 | 1.3 | 项目调研 | manual | 0.96d | 2017-03-14 A | 2017-03-15 A |  | 100% | 2017-03-14 | 2017-03-15 | 2d | 陈少杰 [13%]; 姜鑫 [13%]; 蒲彦均 [13%]; 邹嘉欣 [13%] | 4h | 4h |
| 5 | 1.4 | 讨论确定任务分工 | manual | 1d | 2017-03-15 A | 2017-03-15 A | 4 | 100% | 2017-03-15 | 2017-03-15 | 1d | 陈少杰 [19%]; 姜鑫 [19%]; 蒲彦均 [19%]; 邹嘉欣 [19%] | 6.08h | 6.08h |
| 6 | 1.5 | 会议记录 | manual | 1d | 2017-03-15 A | 2017-03-15 A |  | 100% | 2017-03-15 | 2017-03-15 | 1d | 陈少杰 [6%] | 0.48h | 0.48h |
| 7 | 1.6 | 整理spark资料 | manual | 1d | 2017-03-15 A | 2017-03-15 A |  | 100% | 2017-03-15 | 2017-03-15 | 0d | 姜鑫 [36%] | 2.88h | 2.88h |
| 8 | 1.7 | 撰写任务计划书初稿 | manual | 2d | 2017-03-15 A | 2017-03-16 A | 7 | 100% | 2017-03-15 | 2017-03-16 | 0d | 姜鑫 [25%] | 4h | 4h |
| 9 | 1.8 | 平台搭建调研 | manual | 1d | 2017-03-15 A | 2017-03-15 A | 2 | 100% | 2017-03-15 | 2017-03-15 | 0d | 蒲彦均 [25%] | 2h | 2h |
| 10 | 1.9 | 学习github，并建立项目 | manual | 2d | 2017-03-15 A | 2017-03-16 A | 2 | 100% | 2017-03-15 | 2017-03-16 | 0d | 蒲彦均 [19%] | 3.04h | 3.04h |
| 11 | 1.10 | 学习project并建立mpp文件 | manual | 2d | 2017-03-15 A | 2017-03-16 A | 2 | 100% | 2017-03-15 | 2017-03-16 | 0d | 陈少杰 [19%] | 3.04h | 3.04h |
| 12 | 1.11 | 项目介绍PPT | manual | 2d | 2017-03-16 A | 2017-03-17 A |  | 100% | 2017-03-16 | 2017-03-17 | 0d | 邹嘉欣 [19%] | 3.04h | 3.04h |
| 13 | 2 | **项目需求分析1** |  | 5d | 2017-03-18 A | 2017-03-24 A |  | 100% | 2017-03-18 | 2017-03-24 | 7d |  | 51.04h | 51.04h |
| 14 | 2.1 | 开会确定分工 | manual | 1d | 2017-03-18 A | 2017-03-18 A |  | 100% | 2017-03-18 | 2017-03-18 | 1d | 陈少杰 [19%]; 姜鑫 [19%]; 蒲彦均 [19%]; 邹嘉欣 [19%] | 6.08h | 6.08h |
| 15 | 2.2 | 会议记录 | manual | 1d | 2017-03-18 A | 2017-03-18 A |  | 100% | 2017-03-18 | 2017-03-18 | 1d | 陈少杰 [13%] | 1.04h | 1.04h |
| 16 | 2.3 | 继续学习project，并做本周计划 |  | 1d | 2017-03-18 A | 2017-03-18 A | 14 | 100% | 2017-03-18 | 2017-03-18 | 1d | 陈少杰 [19%] | 1.52h | 1.52h |
| 17 | 2.4 | 对D、E组项目进行评价 | manual | 1d | 2017-03-19 A | 2017-03-19 A |  | 100% | 2017-03-19 | 2017-03-19 | 1d | 陈少杰 [13%]; 邹嘉欣 [13%]; 蒲彦均 [13%]; 姜鑫 [13%] | 4.16h | 4.16h |
| 18 | 2.5 | 修改项目计划书 | manual | 1d | 2017-03-20 A | 2017-03-20 A |  | 100% | 2017-03-20 | 2017-03-20 | 1d | 邹嘉欣 [25%] | 2h | 2h |
| 19 | 2.6 | 查找spark streaming相关需求，切分需求 | manual | 1d | 2017-03-20 A | 2017-03-20 A |  | 100% | 2017-03-20 | 2017-03-20 | 1d | 陈少杰 | 8h | 8h |
| 20 | 2.7 | 编写需求说明书初稿和作业调度部分 | manual | 1d | 2017-03-21 A | 2017-03-21 A | 19 | 100% | 2017-03-21 | 2017-03-21 | 1d | 邹嘉欣 [38%] | 3.04h | 3.04h |
| 21 | 2.8 | 完成数据获取、窗口支持需求及用例图 | manual | 1d | 2017-03-21 A | 2017-03-21 A | 19 | 100% | 2017-03-21 | 2017-03-21 | 1d | 陈少杰 [50%] | 4h | 4h |
| 22 | 2.9 | 数据流抽象部分 | manual | 1d | 2017-03-21 A | 2017-03-22 A | 19 | 100% | 2017-03-21 | 2017-03-21 | 1d | 姜鑫 [25%] | 2h | 2h |
| 23 | 2.10 | 完成容错功能编写和RUCM模型 | manual | 1d | 2017-03-21 A | 2017-03-21 A | 19 | 100% | 2017-03-21 | 2017-03-21 | 1d | 蒲彦均 [88%] | 7.04h | 7.04h |
| 24 | 2.11 | 安装spark虚拟机集群 | manual | 2d | 2017-03-22 A | 2017-03-23 A |  | 100% | 2017-03-22 | 2017-03-23 | 2d | 姜鑫 [38%]; 邹嘉欣 [19%] | 9.12h | 9.12h |
| 25 | 2.12 | 制作PPT，准备展示 | manual | 2d | 2017-03-23 A | 2017-03-24 A |  | 100% | 2017-03-23 | 2017-03-24 | 2d | 陈少杰 [19%] | 3.04h | 3.04h |

| ID | WBS | Task | Type | Duration | Start | Finish | Predecessors | Complete | Baseline start | Baseline finish | Baseline duration | Resources | Work | Actual work |
| --- | --- | --- | --- | --- | --- | --- | --- | --- | --- | --- | --- | --- | --- | --- |
| 26 | 3 | **项目需求分析2** |  | 5d | 2017-03-25 A | 2017-03-31 A |  | 100% | 2017-03-25 | 2017-03-31 | 7d |  | 40.57h | 40.57h |
| 27 | 3.1 | 开会确定本周任务安排 | manual | 1d | 2017-03-25 A | 2017-03-25 A |  | 100% | 2017-03-25 | 2017-03-25 | 1d | 陈少杰 [13%]; 姜鑫 [13%]; 蒲彦均 [13%]; 邹嘉欣 [13%] | 4.16h | 4.16h |
| 28 | 3.2 | 会议记录 | manual | 1d | 2017-03-25 A | 2017-03-25 A |  | 100% | 2017-03-25 | 2017-03-25 | 1d | 陈少杰 [6%] | 0.48h | 0.48h |
| 29 | 3.3 | 添加本周计划mpp |  | 1d | 2017-03-26 A | 2017-03-26 A | 27 | 100% | 2017-03-25 | 2017-03-25 | 1d | 陈少杰 [13%] | 1.04h | 1.04h |
| 30 | 3.4 | 完成非功能需求 | manual | 1d | 2017-03-27 A | 2017-03-27 A |  | 100% | 2017-03-27 | 2017-03-27 | 1d | 陈少杰 [50%] | 4h | 4h |
| 31 | 3.5 | 完善功能性需求 | manual | 1d | 2017-03-27 A | 2017-03-27 A |  | 100% | 2017-03-27 | 2017-03-27 | 1d | 姜鑫 [25%] | 2h | 2h |
| 32 | 3.6 | 完成业务需求 | manual | 1d | 2017-03-27 A | 2017-03-27 A |  | 100% | 2017-03-27 | 2017-03-27 | 1d | 邹嘉欣 [38%] | 3.04h | 3.04h |
| 33 | 3.7 | 调研spark streaming集群运行环境 | manual | 2d | 2017-03-28 A | 2017-03-29 A |  | 100% | 2017-03-28 | 2017-03-29 | 2d | 姜鑫 [19%]; 蒲彦均 [25%] | 7.04h | 7.04h |
| 34 | 3.8 | 学习github | manual | 1d | 2017-03-29 A | 2017-03-30 A |  | 100% | 2017-03-29 | 2017-03-29 | 1d | 邹嘉欣 [25%] | 2.25h | 2.25h |
| 35 | 3.9 | 制定评审单 | manual | 1d | 2017-03-29 A | 2017-03-29 A |  | 100% | 2017-03-29 | 2017-03-29 | 1d | 蒲彦均 [13%] | 1.04h | 1.04h |
| 36 | 3.10 | 对D组需求说明进行评价 | manual | 1d | 2017-03-30 A | 2017-03-30 A |  | 100% | 2017-03-30 | 2017-03-30 | 1d | 陈少杰 [25%]; 邹嘉欣 [25%] | 4h | 4h |
| 37 | 3.11 | 对E组需求说明进行评价 | manual | 1d | 2017-03-30 A | 2017-03-30 A |  | 100% | 2017-03-30 | 2017-03-30 | 1d | 姜鑫 [25%]; 蒲彦均 [25%] | 4h | 4h |
| 38 | 3.12 | 汇总D、E需求说明书问题清单 | manual | 1d | 2017-03-30 A | 2017-03-30 A | 36, 37 | 100% | 2017-03-30 | 2017-03-30 | 1d | 陈少杰 [6%] | 0.48h | 0.48h |
| 39 | 3.13 | 根据问题清单修改需求说明书 | manual | 1d | 2017-03-30 A | 2017-03-30 A |  | 100% | 2017-03-30 | 2017-03-30 | 1d | 陈少杰 [25%]; 蒲彦均 [25%] | 4h | 4h |
| 40 | 3.14 | 制作PPT，准备展示 | manual | 2d | 2017-03-30 A | 2017-03-31 A | 39 | 100% | 2017-03-30 | 2017-03-31 | 2d | 蒲彦均 [19%] | 3.04h | 3.04h |
| 41 | 4 | **需求评审** |  | 5d | 2017-04-01 A | 2017-04-07 A |  | 100% | 2017-04-01 | 2017-04-07 | 7d |  | 33.35h | 33.35h |
| 42 | 4.1 | 开会讨论后续任务 | manual | 1d | 2017-04-01 A | 2017-04-01 A |  | 100% | 2017-04-01 | 2017-04-01 | 1d | 陈少杰 [19%]; 姜鑫 [19%]; 蒲彦均 [19%]; 邹嘉欣 [19%] | 6.08h | 6.08h |
| 43 | 4.2 | 会议记录 | manual | 1d | 2017-04-01 A | 2017-04-01 A |  | 100% | 2017-04-01 | 2017-04-01 | 1d | 陈少杰 [6%] | 0.48h | 0.48h |
| 44 | 4.3 | 本周具体任务分配（mpp文件） |  | 1d | 2017-04-01 A | 2017-04-01 A | 42 | 100% | 2017-04-01 | 2017-04-01 | 1d | 陈少杰 [13%] | 1.04h | 1.04h |
| 45 | 4.4 | 业务需求补充 | manual | 1d | 2017-04-02 A | 2017-04-02 A |  | 100% | 2017-04-02 | 2017-04-05 | 3d | 姜鑫 [38%] | 3.04h | 3.04h |
| 46 | 4.5 | 用例修改 | manual | 2d | 2017-04-04 A | 2017-04-05 A |  | 100% | 2017-04-04 | 2017-04-05 | 3d | 陈少杰 [19%] | 3.04h | 3.04h |
| 47 | 4.6 | 搭建spark集群 | manual | 2d | 2017-04-03 A | 2017-04-04 A |  | 100% | 2017-04-03 | 2017-04-04 | 2d | 蒲彦均 [38%]; 姜鑫 [38%] | 11.78h | 11.78h |
| 48 | 4.7 | 审核需求规格说明书 | manual | 1d | 2017-04-06 A | 2017-04-06 A | 45, 46 | 100% | 2017-04-06 | 2017-04-06 | 1d | 陈少杰 [13%]; 蒲彦均 [25%]; 邹嘉欣 [25%] | 5.04h | 5.04h |
| 49 | 4.8 | 制作PPT、展示 | manual | 1.88d | 2017-04-06 A | 2017-04-07 A |  | 100% | 2017-04-06 | 2017-04-07 | 2d | 邹嘉欣 [19%] | 2.85h | 2.85h |

| ID | WBS | Task | Type | Duration | Start | Finish | Predecessors | Complete | Baseline start | Baseline finish | Baseline duration | Total slack | Constraint | Resources | Work | Actual work |
| --- | --- | --- | --- | --- | --- | --- | --- | --- | --- | --- | --- | --- | --- | --- | --- | --- |
| 50 | 5 | **第一次实验6-8** |  | 5d | 2017-04-08 A | 2017-04-14 A |  | 100% | 2017-04-08 | 2017-04-14 | 0d |  |  |  | 50.8h | 50.8h |
| 51 | 5.1 | 开会确定本周安排 | manual | 1d | 2017-04-08 A | 2017-04-08 A |  | 100% | 2017-04-08 | 2017-04-08 | 1d |  |  | 陈少杰 [19%]; 姜鑫 [19%]; 蒲彦均 [19%]; 邹嘉欣 [19%] | 6.08h | 6.08h |
| 52 | 5.2 | 会议记录 | manual | 1d | 2017-04-08 A | 2017-04-08 A |  | 100% | 2017-04-08 | 2017-04-08 | 1d |  |  | 陈少杰 [6%] | 0.48h | 0.48h |
| 53 | 5.3 | 更新本周计划 |  | 1d | 2017-04-09 A | 2017-04-09 A | 51 | 100% | 2017-04-08 | 2017-04-08 | 1d |  |  | 陈少杰 [13%] | 1.04h | 1.04h |
| 54 | 5.4 | 补做对D组项目需求评审 | manual | 1d | 2017-04-09 A | 2017-04-09 A |  | 100% | 2017-04-09 | 2017-04-09 | 1d |  |  | 陈少杰 [19%]; 邹嘉欣 [19%] | 3.04h | 3.04h |
| 55 | 5.5 | 补做对E组项目的需求评审 | manual | 1d | 2017-04-09 A | 2017-04-09 A |  | 100% | 2017-04-09 | 2017-04-09 | 1d |  |  | 姜鑫 [19%]; 蒲彦均 [19%] | 3.04h | 3.04h |
| 56 | 5.6 | 补全前几周工作日志 | manual | 2d | 2017-04-10 A | 2017-04-11 A |  | 100% | 2017-04-10 | 2017-04-11 | 2d |  |  | 陈少杰 [19%]; 姜鑫 [13%]; 蒲彦均 [19%]; 邹嘉欣 [13%] | 10.24h | 10.24h |
| 57 | 5.7 | 修改mpp文件存在问题 | manual | 2d | 2017-04-12 A | 2017-04-13 A | 53 | 100% | 2017-04-11 | 2017-04-13 | 2d |  |  | 陈少杰 [60%] | 9.6h | 9.6h |
| 58 | 5.8 | 工作量统计 | manual | 2d | 2017-04-12 A | 2017-04-13 A |  | 100% | 2017-04-12 | 2017-04-13 | 2d |  |  | 姜鑫 [19%] | 3.04h | 3.04h |
| 59 | 5.9 | 配置管理 | manual | 2d | 2017-04-12 A | 2017-04-13 A |  | 100% | 2017-04-12 | 2017-04-13 | 2d |  |  | 邹嘉欣 [13%] | 2.08h | 2.08h |
| 60 | 5.10 | 进度控制 | manual | 2d | 2017-04-12 A | 2017-04-13 A |  | 100% | 2017-04-12 | 2017-04-13 | 2d |  |  | 陈少杰 [19%]; 蒲彦均 [19%] | 6.08h | 6.08h |
| 61 | 5.11 | 修复spark集群存在问题 | manual | 1d | 2017-04-14 A | 2017-04-14 A |  | 100% | 2017-04-14 | 2017-04-14 | 1d |  |  | 蒲彦均 [38%] | 3.04h | 3.04h |
| 62 | 5.12 | 制作PPT、展示 | manual | 1d | 2017-04-14 A | 2017-04-14 A | 58, 59, 60 | 100% | 2017-04-13 | 2017-04-14 | 2d |  |  | 陈少杰 [38%] | 3.04h | 3.04h |
| 63 | 6 | 需求复评审 |  | 1d | 2017-04-15 | 2017-04-17 |  |  | 2017-04-15 |  | 0d | 45d | start no earlier than 2017-04-15 |  |  |  |
| 65 | 7 | 改进设计方案 | manual | 6d | 2017-04-22 | 2017-05-01 |  |  | 2017-04-22 | 2017-04-28 | 0d |  |  |  |  |  |
| 67 | 8 | 设计与实现1 | manual | 6d | 2017-04-29 | 2017-05-08 |  |  | 2017-04-29 | 2017-05-05 | 0d |  |  |  |  |  |
| 69 | 9 | 设计与实现2 | manual | 6d | 2017-05-06 | 2017-05-15 |  |  | 2017-05-06 | 2017-05-12 | 0d |  |  |  |  |  |
| 71 | 10 | 软件测试分析 | manual | 6d | 2017-05-13 | 2017-05-22 |  |  | 2017-05-13 | 2017-05-19 | 0d |  |  |  |  |  |
| 73 | 11 | 软件测试评审 | manual | 1d | 2017-03-13 | 2017-03-14 |  |  |  |  |  |  |  |  |  |  |
| 74 | 12 | 软件测试复评审 | manual | 6d | 2017-05-20 | 2017-05-29 |  |  | 2017-05-20 | 2017-05-26 | 0d |  |  |  |  |  |
| 76 | 13 | 软件演示与测评 | manual | 6d | 2017-05-27 | 2017-06-05 |  |  | 2017-05-27 | 2017-06-02 | 0d |  |  |  |  |  |
| 78 | 14 | 综合实验分析 | manual | 6d | 2017-06-03 | 2017-06-12 |  |  | 2017-06-03 | 2017-06-09 | 0d |  |  |  |  |  |
| 80 | 15 | 综合实验总结 | manual | 6d | 2017-06-10 | 2017-06-19 |  |  | 2017-06-10 | 2017-06-16 | 0d |  |  |  |  |  |
